# ----------------Project Header-------------
project 1.0 "" 2025-01-01 +364d {    timezone "UTC"
    currency "USD"
    now 
    workinghours thu 9-17
        scenario base "Baseline Scenario"{
            active yes
        }
        scenario optimistic "Optimistic Scenario"{
            active no
        }
        scenario pessimistic "Pessimistic Scenario"{
            active no
        }
markdate 2025-06-15
dailyworkinghours project.dailyworkinghours
timingresolution 60min
yearlyworkingdays 250min
weekstartsmonday
}

# ------------END-------------

# ------------Shifts-------------
shift shift1 "Day Shift" {
    replace
    timezone UTC
    workinghours mon-fri 9-17
    leaves holiday 2025-12-25
shifts
}
shift shift2 "Evening Shift" {
    timezone UTC
    workinghours mon-fri 13-21
    shift subshift2_1 "Sub Evening"
shifts
}
shift shift3 "Night Shift" {
    timezone UTC
    workinghours mon-fri 21-5
shifts
}



# ------------END-------------


# ------------Flags-------------
flags
adj,
analyst,
manager,
qa,
sec,
mig,
maint,
design,
req,
doc,
requirements,
opt,
dev,
uat,
train,
planning,
deploy,
audit,
arch
# ------------END-------------


# ----------------Accounts-------------
account acct1 "Project Expenses" {
    aggregate sum
    flag 
    account subacct1_1 Salaries
    account subacct1_2 Hardware
    credits 2025-01-01 "Initial funding" 100000.0
    credits 2025-06-01 "Mid-year funding" 50000.0
}
account acct2 "Revenue" {
    aggregate sum
    flag 
    credits None "Expected revenue" 200000.0
}

# ------------END-------------


# ------------Resources-------------
resource  "" {    rate 150.0
    email pm@example.com
    flag 
    efficiency 1.0
    shifts shift1
        workinghours mon-fri 9-18
    leaves start 2025-07-01
    vacation Summer Vacation 2025-07-01-2025-07-10

}
resource  "" {    rate 120.0
    email ba@example.com
    managers res1
    flag 
    efficiency 0.9
    shifts shift1

}
resource  "" {    rate 130.0
    email re@example.com
    managers res1
    flag 
    efficiency 1.0
    shifts shift2

    resource subres3_1 "Assistant RE"
}
resource  "" {    rate 140.0
    email designer@example.com
    managers res1
    flag 
    efficiency 1.0
    shifts shift1

}
resource  "" {    rate 160.0
    email arch@example.com
    managers res1
    flag 
    efficiency 1.0
    shifts shift1

}
resource  "" {    rate 100.0
    email dev1@example.com
    managers res1
    flag 
    efficiency 0.95
    shifts shift3

}
resource  "" {    rate 100.0
    email dev2@example.com
    managers res1
    flag 
    efficiency 1.0
    shifts shift3

}
resource  "" {    rate 100.0
    email dev3@example.com
    managers res1
    flag 
    efficiency 1.0
    shifts shift3

}
resource  "" {    rate 110.0
    email tester1@example.com
    managers res1
    flag 
    efficiency 1.0
    shifts shift2

}
resource  "" {    rate 110.0
    email tester2@example.com
    managers res1
    flag 
    efficiency 1.0
    shifts shift2

}

# ------------END-------------



# ------------Tasks-------------
task  "" {    note Initial planning task.
    scheduling asap
    responsible res1
    schedulingmode effort
    shifts shift1
    chargeset planning
    precedes task2
    scheduled
    priority 1000
    effort 120.0d
    effortdone 120.0d
    duration 15.0d
    length 15.0d
    complete 100.0
    minstart 2025-01-01
    maxend 2025-01-20
    minend 2025-01-10
    end 2025-01-15
    charge 5000.0
    maxend 2025-01-20
    flag 
}
task  "" {    note Gather requirements from stakeholders.
    scheduling asap
    responsible res3
    schedulingmode effort
    shifts shift2
    chargeset requirements
    depends task1
    precedes task3
    priority 900
    effort 240.0d
    effortdone 192.0d
    duration 30.0d
    effortleft 48.0d
    length 30.0d
    complete 80.0
    maxstart 2025-01-16
    minstart 2025-01-16
    maxend 2025-02-20
    minend 2025-02-10
    charge 8000.0
    maxend 2025-02-20
    flag 
    task subtask2_1 Interview Users
    task subtask2_2 Document Requirements
}
task  "" {    note System design.
    scheduling alap
    responsible res4
    schedulingmode duration
    chargeset design
    depends task2
    priority 800
    effort 360.0d
    effortdone 180.0d
    duration 45.0d
    effortleft 180.0d
    length 45.0d
    complete 50.0
    charge 10000.0
    flag 
    task subtask3_1 Architecture Design
    task subtask3_2 UI/UX Design
    task subtask3_3 Database Design
}
task  "" {    note Code development.
    scheduling asap
    responsible res6
    schedulingmode effort
    chargeset dev
    depends task3
    priority 700
    effort 720.0d
    effortdone 144.0d
    duration 90.0d
    effortleft 576.0d
    length 90.0d
    complete 20.0
    charge 20000.0
    flag 
    task subtask4_1 Frontend Development
    task subtask4_2 Backend Development
    task subtask4_3 Integration
}
task  "" {    note Quality assurance.
    scheduling asap
    responsible res9
    schedulingmode effort
    chargeset qa
    depends task4
    priority 600
    effort 480.0d
    duration 60.0d
    effortleft 480.0d
    length 60.0d
    charge 15000.0
    flag 
    task subtask5_1 Unit Testing
    task subtask5_2 Integration Testing
    task subtask5_3 System Testing
}
task  "" {    milestone
    note Final deployment.
    scheduling asap
    responsible res1
    schedulingmode duration
    chargeset deploy
    depends task5
    priority 500
    effort 120.0d
    duration 15.0d
    effortleft 120.0d
    length 15.0d
    charge 5000.0
    flag 
}
task  "" {    note Post-deployment maintenance.
    scheduling alap
    responsible res2
    schedulingmode effort
    chargeset maint
    depends task6
    priority 400
    effort 240.0d
    duration 30.0d
    effortleft 240.0d
    length 30.0d
    charge 3000.0
    flag 
}
task  "" {    note Project documentation.
    scheduling asap
    responsible res3
    schedulingmode length
    chargeset doc
    depends task3
    priority 300
    effort 360.0d
    effortdone 36.0d
    duration 45.0d
    effortleft 324.0d
    length 45.0d
    complete 10.0
    charge 4000.0
    flag 
    task subtask8_1 User Manual
    task subtask8_2 Technical Docs
}
task  "" {    note User training sessions.
    scheduling asap
    responsible res4
    schedulingmode effort
    chargeset train
    depends task5
    priority 200
    effort 160.0d
    duration 20.0d
    effortleft 160.0d
    length 20.0d
    charge 2000.0
    flag 
}
task  "" {    milestone
    note Final review.
    scheduling asap
    responsible res5
    schedulingmode duration
    chargeset audit
    depends task6
    priority 100
    effort 80.0d
    duration 10.0d
    effortleft 80.0d
    length 10.0d
    charge 1000.0
    flag 
}
task  "" {    note Migrate existing data.
    scheduling asap
    responsible res6
    schedulingmode effort
    chargeset mig
    depends task4
    priority 850
    effort 240.0d
    duration 30.0d
    effortleft 240.0d
    length 30.0d
    charge 6000.0
    flag 
}
task  "" {    note Conduct security checks.
    scheduling asap
    responsible res7
    schedulingmode effort
    chargeset sec
    depends task5
    priority 950
    effort 160.0d
    duration 20.0d
    effortleft 160.0d
    length 20.0d
    charge 7000.0
    flag 
}
task  "" {    note Optimize system performance.
    scheduling asap
    responsible res8
    schedulingmode effort
    chargeset opt
    depends task4
    priority 750
    effort 200.0d
    duration 25.0d
    effortleft 200.0d
    length 25.0d
    charge 4000.0
    flag 
}
task  "" {    note UAT phase.
    scheduling asap
    responsible res9
    schedulingmode effort
    chargeset uat
    depends task5
    priority 650
    effort 240.0d
    duration 30.0d
    effortleft 240.0d
    length 30.0d
    charge 5000.0
    flag 
}
task  "" {    note Make final changes.
    scheduling asap
    responsible res10
    schedulingmode effort
    chargeset adj
    depends task14
    priority 550
    effort 80.0d
    duration 10.0d
    effortleft 80.0d
    length 10.0d
    charge 2000.0
    flag 
}

# ------------END-------------

